Schedule from MS Project XML, 2017-05-31 to 2017-07-03.

## Calendars

- Standard: Mon-Fri 08:00-12:00, 13:00-17:00; Sat-Sun off.

## Resources

| Resource |
| --- |
| 郭茜 |
| 王琛 |
| 白凯 |
| 赵一鸣 |
| 虞里杉 |
| 袁伟明 |
| 刘旭 |
| ？？ |
| 柴宗三 |
| 江彤 |
| 敬晓阳 |
| 张宁 |
| 贾双喜 |
| 罗丹丹 |
| 于晶 |
| 张富强 |
| 闫林生 |
| 赵星云 |
| 柴宗三 |
| 王栋 |

## Schedule

| ID | WBS | Task | Duration | Start | Finish | Predecessors | Baseline start | Baseline finish | Baseline duration | Constraint | Resources | Work |
| --- | --- | --- | --- | --- | --- | --- | --- | --- | --- | --- | --- | --- |
| 1 | 1 | **前端开发－橘云多租户管理平台** | 22d | 2017-05-31 | 2017-06-30 |  | 2017-05-31 | 2017-06-28 | 20d | start no earlier than 2017-05-31 |  | 616h |
| 2 | 1.1 | **单点登录功能开发** | 7d | 2017-05-31 | 2017-06-09 |  | 2017-05-31 | 2017-06-07 | 5d | start no earlier than 2017-05-24 |  | 56h |
| 3 | 1.1.1 | 调用中信云用户中心登录认证接口 | 2d | 2017-05-31 | 2017-06-02 |  |  |  |  | start no earlier than 2017-05-25 | 江彤 | 16h |
| 4 | 1.1.2 | 信云智控制台跳转到统一管控界面 | 1d | 2017-06-04 | 2017-06-05 | 3 |  |  |  | start no earlier than 2017-05-25 | 江彤 | 8h |
| 5 | 1.1.3 | 橘云多租户管理从统一管控平台无密码登录 | 2d | 2017-06-05 | 2017-06-07 | 4 |  |  |  | start no earlier than 2017-05-25 | 江彤 | 16h |
| 6 | 1.1.4 | 橘云Ambari运维平台从统一管控页面无密码登录 | 2d | 2017-06-07 | 2017-06-09 | 5 |  |  |  | start no earlier than 2017-05-25 | 江彤 | 16h |
| 7 | 1.2 | **租户管理页面框架开发** | 8d | 2017-05-31 | 2017-06-12 |  | 2017-05-31 | 2017-06-14 | 10d | start no earlier than 2017-05-24 |  | 64h |
| 8 | 1.2.1 | 租户管理页面顶级导航栏功能开发 | 4d | 2017-05-31 | 2017-06-06 |  |  |  |  | start no earlier than 2017-05-25 | 虞里杉 | 32h |
| 9 | 1.2.2 | 租户管理页面前端开发框架准备 | 2d | 2017-06-06 | 2017-06-08 | 8 |  |  |  | start no earlier than 2017-05-25 | 虞里杉 | 16h |
| 10 | 1.2.3 | 初始化一个系统管理员用户 | 1d | 2017-06-08 | 2017-06-09 | 9 |  |  |  | start no earlier than 2017-05-25 | 虞里杉 | 8h |
| 11 | 1.2.4 | 与单点登录服务的集成 | 1d | 2017-06-11 | 2017-06-12 | 10 |  |  |  | start no earlier than 2017-05-25 | 虞里杉 | 8h |
| 12 | 1.3 | **统一管控平台开发** | 15d | 2017-05-31 | 2017-06-21 |  | 2017-05-31 | 2017-06-21 | 15d | start no earlier than 2017-05-24 |  | 120h |
| 13 | 1.3.1 | 统一管控平台页面设计 | 3d | 2017-05-31 | 2017-06-05 |  |  |  |  | start no earlier than 2017-05-25 | 敬晓阳 | 24h |
| 14 | 1.3.2 | 统一管控平台页面开发 | 4d | 2017-06-05 | 2017-06-09 | 13 |  |  |  | start no earlier than 2017-05-25 | 敬晓阳 | 32h |
| 15 | 1.3.3 | 多租户平台管理页面接入 | 2d | 2017-06-11 | 2017-06-13 | 14 |  |  |  | start no earlier than 2017-05-25 | 敬晓阳 | 16h |
| 16 | 1.3.4 | 运维管理平台页面接入 | 1d | 2017-06-13 | 2017-06-14 | 15 |  |  |  | start no earlier than 2017-05-25 | 敬晓阳 | 8h |
| 17 | 1.3.5 | 第三方服务运维平台梳理 | 2d | 2017-06-14 | 2017-06-16 | 16 |  |  |  | start no earlier than 2017-05-25 | 敬晓阳 | 16h |
| 18 | 1.3.6 | 第三方服务运维平台接入 | 3d | 2017-06-18 | 2017-06-21 | 17 |  |  |  | start no earlier than 2017-05-25 | 敬晓阳 | 24h |
| 19 | 1.4 | **租户资源使用情况监控页面开发** | 14d | 2017-06-11 | 2017-06-29 | 2 | 2017-06-07 | 2017-06-28 | 15d | start no earlier than 2017-05-24 |  | 112h |
| 20 | 1.4.1 | 租户级的HDFS资源使用信息获取 | 2d | 2017-06-11 | 2017-06-13 |  |  |  |  | start no earlier than 2017-05-25 | 江彤 | 16h |
| 21 | 1.4.2 | 租户级的YARN资源使用信息获取 | 1d | 2017-06-13 | 2017-06-14 | 20 |  |  |  | start no earlier than 2017-05-25 | 江彤 | 8h |
| 22 | 1.4.3 | 租户级的Hive资源使用信息获取 | 2d | 2017-06-14 | 2017-06-16 | 21 |  |  |  | start no earlier than 2017-05-25 | 江彤 | 16h |
| 23 | 1.4.4 | 租户级的HBase资源使用信息获取 | 1d | 2017-06-18 | 2017-06-19 | 22 |  |  |  | start no earlier than 2017-05-25 | 江彤 | 8h |
| 24 | 1.4.5 | 租户级的Kafka资源使用信息获取 | 2d | 2017-06-19 | 2017-06-21 | 23 |  |  |  | start no earlier than 2017-05-25 | 江彤 | 16h |
| 25 | 1.4.6 | 租户级的Oracle资源使用信息获取 | 0d | 2017-06-21 | 2017-06-21 | 24 |  |  |  | start no earlier than 2017-05-25 | 江彤 |  |
| 26 | 1.4.7 | 租户级的GreenPlum 资源使用信息获取 | 2d | 2017-06-21 | 2017-06-23 | 25 |  |  |  | start no earlier than 2017-05-25 | 江彤 | 16h |
| 27 | 1.4.8 | 租户级的MongoDB资源使用信息获取 | 1d | 2017-06-25 | 2017-06-26 | 26 |  |  |  | start no earlier than 2017-05-25 | 江彤 | 8h |
| 28 | 1.4.9 | 租户级的Neo4j资源使用信息获取 | 2d | 2017-06-26 | 2017-06-28 | 27 |  |  |  | start no earlier than 2017-05-25 | 江彤 | 16h |
| 29 | 1.4.10 | 租户级的RabbitMQ资源使用信息获取 | 1d | 2017-06-28 | 2017-06-29 | 28 |  |  |  | start no earlier than 2017-05-25 | 江彤 | 8h |

| ID | WBS | Task | Duration | Start | Finish | Predecessors | Baseline start | Baseline finish | Baseline duration | Constraint | Resources | Work |
| --- | --- | --- | --- | --- | --- | --- | --- | --- | --- | --- | --- | --- |
| 30 | 1.5 | **租户角色管理，分配页面开发** | 10d | 2017-05-31 | 2017-06-14 |  | 2017-05-31 | 2017-06-14 | 10d | start no earlier than 2017-05-24 |  | 80h |
| 31 | 1.5.1 | 租户用户列表页面开发 | 4d | 2017-05-31 | 2017-06-06 |  |  |  |  | start no earlier than 2017-05-25 | 张宁 | 32h |
| 32 | 1.5.2 | 租户授权页面开发 | 4d | 2017-06-06 | 2017-06-12 | 31 |  |  |  | start no earlier than 2017-05-25 | 张宁 | 32h |
| 33 | 1.5.3 | 租户授权时获取云用户中心用户列表功能开发 | 2d | 2017-06-12 | 2017-06-14 | 32 |  |  |  | start no earlier than 2017-05-25 | 张宁 | 16h |
| 34 | 1.6 | **租户基本信息页面开发** | 7d | 2017-06-21 | 2017-06-30 | 12 | 2017-06-21 | 2017-06-28 | 5d | start no earlier than 2017-05-24 |  | 56h |
| 35 | 1.6.1 | 租户基本信息展示 | 3d | 2017-06-21 | 2017-06-26 |  |  |  |  | start no earlier than 2017-05-25 | 敬晓阳 | 24h |
| 36 | 1.6.2 | 租户包涵的服务展示 | 4d | 2017-06-26 | 2017-06-30 | 35 |  |  |  | start no earlier than 2017-05-25 | 敬晓阳 | 32h |
| 37 | 1.7 | **服务管理页面开发** | 11d | 2017-05-31 | 2017-06-15 |  | 2017-05-31 | 2017-06-21 | 15d | start no earlier than 2017-05-24 |  | 88h |
| 38 | 1.7.1 | 服务列表页面开发 | 4d | 2017-05-31 | 2017-06-06 |  |  |  |  | start no earlier than 2017-05-25 | 贾双喜 | 32h |
| 39 | 1.7.2 | 服务列表页面与后端集成 | 1d | 2017-06-06 | 2017-06-07 | 38 |  |  |  | start no earlier than 2017-05-25 | 贾双喜 | 8h |
| 40 | 1.7.3 | 服务添加页面框架开发 | 1d | 2017-06-07 | 2017-06-08 | 39 |  |  |  | start no earlier than 2017-05-25 | 贾双喜 | 8h |
| 41 | 1.7.4 | HDFS服务添加页面增强 | 1d | 2017-06-08 | 2017-06-09 | 40 |  |  |  | start no earlier than 2017-05-25 | 贾双喜 | 8h |
| 42 | 1.7.5 | YARN服务添加页面增强 | 1d | 2017-06-11 | 2017-06-12 | 41 |  |  |  | start no earlier than 2017-05-25 | 贾双喜 | 8h |
| 43 | 1.7.6 | Hive服务添加页面增强 | 1d | 2017-06-12 | 2017-06-13 | 42 |  |  |  | start no earlier than 2017-05-25 | 贾双喜 | 8h |
| 44 | 1.7.7 | HBase服务添加页面增强 | 1d | 2017-06-13 | 2017-06-14 | 43 |  |  |  | start no earlier than 2017-05-25 | 贾双喜 | 8h |
| 45 | 1.7.8 | Kafka服务添加页面增强 | 1d | 2017-06-14 | 2017-06-15 | 44 |  |  |  | start no earlier than 2017-05-25 | 贾双喜 | 8h |
| 46 | 1.7.9 | Oracle服务添加页面增强 | 0d | 2017-06-15 | 2017-06-15 | 45 |  |  |  | start no earlier than 2017-05-25 |  |  |
| 47 | 1.7.10 | GreenPlum服务添加页面增强 | 0d | 2017-06-15 | 2017-06-15 | 46 |  |  |  | start no earlier than 2017-05-25 | 贾双喜 |  |
| 48 | 1.7.11 | MongoDB服务添加页面增强 | 0d | 2017-06-15 | 2017-06-15 | 47 |  |  |  | start no earlier than 2017-05-25 | 贾双喜 |  |
| 49 | 1.7.12 | Neo4j服务添加页面增强 | 0d | 2017-06-15 | 2017-06-15 | 48 |  |  |  | start no earlier than 2017-05-25 | 贾双喜 |  |
| 50 | 1.7.13 | RabbitMQ服务添加页面增强 | 0d | 2017-06-15 | 2017-06-15 | 49 |  |  |  | start no earlier than 2017-05-25 | 贾双喜 |  |
| 51 | 1.8 | **角色管理页面开发** | 5d | 2017-06-15 | 2017-06-22 | 37 | 2017-06-21 | 2017-06-28 | 5d | start no earlier than 2017-05-24 |  | 40h |
| 52 | 1.8.1 | 角色列表页面开发 | 3d | 2017-06-15 | 2017-06-20 |  |  |  |  | start no earlier than 2017-05-25 | 贾双喜 | 24h |
| 53 | 1.8.2 | 角色列表获取API调用 | 2d | 2017-06-20 | 2017-06-22 | 52 |  |  |  | start no earlier than 2017-05-25 | 贾双喜 | 16h |

| ID | WBS | Task | Duration | Start | Finish | Predecessors | Baseline start | Baseline finish | Baseline duration | Constraint | Resources | Work |
| --- | --- | --- | --- | --- | --- | --- | --- | --- | --- | --- | --- | --- |
| 54 | 2 | **服务端开发－橘云多租户管理平台** | 18d | 2017-05-31 | 2017-06-26 |  | 2017-05-31 | 2017-06-28 | 20d | start no earlier than 2017-05-31 |  | 392h |
| 55 | 2.1 | **服务管理功能开发** | 10d | 2017-05-31 | 2017-06-14 |  | 2017-05-31 | 2017-06-14 | 10d | start no earlier than 2017-05-24 |  | 80h |
| 56 | 2.1.1 | 服务和服务实例接口定义 | 2d | 2017-05-31 | 2017-06-02 |  |  |  |  | start no earlier than 2017-05-25 | 白凯 | 16h |
| 57 | 2.1.2 | 服务和服务实例接口开发 | 1d | 2017-06-04 | 2017-06-05 | 56 |  |  |  | start no earlier than 2017-05-25 | 白凯 | 8h |
| 58 | 2.1.3 | 服务管理功能开发 | 3d | 2017-06-05 | 2017-06-08 | 57 |  |  |  | start no earlier than 2017-05-25 | 白凯 | 24h |
| 59 | 2.1.4 | 服务实例管理功能开发 | 4d | 2017-06-08 | 2017-06-14 | 58 |  |  |  | start no earlier than 2017-05-25 | 白凯 | 32h |
| 60 | 2.2 | **权限管理功能开发** | 10d | 2017-05-31 | 2017-06-14 |  | 2017-06-14 | 2017-06-28 | 10d | start no earlier than 2017-05-24 |  | 80h |
| 61 | 2.2.1 | 四种角色控制框架设计 | 3d | 2017-05-31 | 2017-06-05 |  |  |  |  | start no earlier than 2017-05-25 | 虞里杉 | 24h |
| 62 | 2.2.2 | 系统管理员权限控制功能开发 | 3d | 2017-06-05 | 2017-06-08 | 61 |  |  |  | start no earlier than 2017-05-25 | 虞里杉 | 24h |
| 63 | 2.2.3 | 项目管理员权限控制功能开发 | 2d | 2017-06-08 | 2017-06-12 | 62 |  |  |  | start no earlier than 2017-05-25 | 虞里杉 | 16h |
| 64 | 2.2.4 | 普通用户权限控制功能开发 | 2d | 2017-06-12 | 2017-06-14 | 63 |  |  |  | start no earlier than 2017-05-25 | 虞里杉 | 16h |
| 65 | 2.3 | **租户管理功能开发** | 15d | 2017-05-31 | 2017-06-21 |  | 2017-05-31 | 2017-06-21 | 15d | start no earlier than 2017-05-24 |  | 152h |
| 66 | 2.3.1 | 租户接口设计 | 3d | 2017-05-31 | 2017-06-05 |  |  |  |  | start no earlier than 2017-05-25 | 赵一鸣 | 24h |
| 67 | 2.3.2 | 租户接口实现 | 3d | 2017-06-05 | 2017-06-08 | 66 |  |  |  | start no earlier than 2017-05-25 | 赵一鸣 | 24h |
| 68 | 2.3.3 | 租户查询 | 1d | 2017-06-08 | 2017-06-09 | 67 |  |  |  | start no earlier than 2017-05-25 | 赵一鸣 | 8h |
| 69 | 2.3.4 | 租户创建 | 4d | 2017-06-11 | 2017-06-15 | 68 |  |  |  | start no earlier than 2017-05-25 | 赵一鸣 | 32h |
| 70 | 2.3.5 | 租户修改 | 4d | 2017-06-15 | 2017-06-21 | 69 |  |  |  | start no earlier than 2017-05-25 | 赵一鸣 | 32h |
| 71 | 2.3.6 | 租户删除 | 4d | 2017-06-06 | 2017-06-12 |  |  |  |  | start no earlier than 2017-06-06 |  | 32h |
| 72 | 2.4 | **服务端配置管理，框架开发** | 10d | 2017-06-12 | 2017-06-26 | 7 | 2017-06-14 | 2017-06-28 | 10d | start no earlier than 2017-05-24 |  | 80h |
| 73 | 2.4.1 | 服务端Web服务器准备 | 3d | 2017-06-12 | 2017-06-15 |  |  |  |  | start no earlier than 2017-05-25 | 虞里杉 | 24h |
| 74 | 2.4.2 | 服务端开发框架准备 | 4d | 2017-06-15 | 2017-06-21 | 73 |  |  |  | start no earlier than 2017-05-25 | 虞里杉 | 32h |
| 75 | 2.4.3 | 服务端代码组织结构设计 | 3d | 2017-06-21 | 2017-06-26 | 74 |  |  |  | start no earlier than 2017-05-25 | 虞里杉 | 24h |
| 76 | 3 | **服务适配器开发** | 20d | 2017-05-31 | 2017-06-28 |  | 2017-05-31 | 2017-06-28 | 20d |  |  | 1040h |
| 77 | 3.1 | **HDFS服务及服务实例开发** | 10d | 2017-05-31 | 2017-06-14 |  | 2017-05-31 | 2017-06-14 | 10d | start no earlier than 2017-05-31 |  | 80h |
| 78 | 3.1.1 | HDFS服务功能开发 | 4d | 2017-05-31 | 2017-06-06 |  |  |  |  | start no earlier than 2017-05-25 | 郭茜 | 32h |
| 79 | 3.1.2 | HDFS服务实例功能开发 | 4d | 2017-06-06 | 2017-06-12 | 78 |  |  |  | start no earlier than 2017-05-25 | 郭茜 | 32h |
| 80 | 3.1.3 | HDFS服务REST API实现 | 2d | 2017-06-12 | 2017-06-14 | 79 |  |  |  | start no earlier than 2017-05-25 | 郭茜 | 16h |

| ID | WBS | Task | Duration | Start | Finish | Predecessors | Baseline start | Baseline finish | Baseline duration | Constraint | Resources | Work |
| --- | --- | --- | --- | --- | --- | --- | --- | --- | --- | --- | --- | --- |
| 81 | 3.2 | **YARN服务及服务实例开发** | 10d | 2017-06-14 | 2017-06-28 | 77 | 2017-06-14 | 2017-06-28 | 10d | start no earlier than 2017-05-31 |  | 80h |
| 82 | 3.2.1 | YARN服务功能开发 | 4d | 2017-06-14 | 2017-06-20 |  |  |  |  | start no earlier than 2017-05-25 | 郭茜 | 32h |
| 83 | 3.2.2 | YARN服务实例功能开发 | 4d | 2017-06-20 | 2017-06-26 | 82 |  |  |  | start no earlier than 2017-05-25 | 郭茜 | 32h |
| 84 | 3.2.3 | YARN服务REST API实现 | 2d | 2017-06-26 | 2017-06-28 | 83 |  |  |  | start no earlier than 2017-05-25 | 郭茜 | 16h |
| 85 | 3.3 | **HBase服务及服务实例开发** | 10d | 2017-05-31 | 2017-06-14 |  | 2017-05-31 | 2017-06-14 | 10d | start no earlier than 2017-05-31 |  | 80h |
| 86 | 3.3.1 | HBase服务功能开发 | 4d | 2017-05-31 | 2017-06-06 |  |  |  |  | start no earlier than 2017-05-25 | 王琛 | 32h |
| 87 | 3.3.2 | HBase服务实例功能开发 | 4d | 2017-06-06 | 2017-06-12 | 86 |  |  |  | start no earlier than 2017-05-25 | 王琛 | 32h |
| 88 | 3.3.3 | HBase服务REST API开发 | 2d | 2017-06-12 | 2017-06-14 | 87 |  |  |  | start no earlier than 2017-05-25 | 王琛 | 16h |
| 89 | 3.4 | **Hive服务及服务实例开发** | 10d | 2017-06-14 | 2017-06-28 | 85 | 2017-06-14 | 2017-06-28 | 10d | start no earlier than 2017-05-31 |  | 80h |
| 90 | 3.4.1 | Hive服务功能开发 | 4d | 2017-06-14 | 2017-06-20 |  |  |  |  | start no earlier than 2017-05-25 | 王琛 | 32h |
| 91 | 3.4.2 | Hive服务实例功能开发 | 4d | 2017-06-20 | 2017-06-26 | 90 |  |  |  | start no earlier than 2017-05-25 | 王琛 | 32h |
| 92 | 3.4.3 | Hive服务REST API实现 | 2d | 2017-06-26 | 2017-06-28 | 91 |  |  |  | start no earlier than 2017-05-25 | 王琛 | 16h |
| 93 | 3.5 | **Kafka服务及服务实例开发** | 10d | 2017-06-14 | 2017-06-28 | 55 | 2017-06-14 | 2017-06-28 | 10d | start no earlier than 2017-05-31 |  | 80h |
| 94 | 3.5.1 | Kafka服务功能开发 | 4d | 2017-06-14 | 2017-06-20 |  |  |  |  | start no earlier than 2017-05-25 | 白凯 | 32h |
| 95 | 3.5.2 | Kafka服务实例功能开发 | 4d | 2017-06-20 | 2017-06-26 | 94 |  |  |  | start no earlier than 2017-05-25 | 白凯 | 32h |
| 96 | 3.5.3 | Kafka服务REST API实现 | 2d | 2017-06-26 | 2017-06-28 | 95 |  |  |  | start no earlier than 2017-05-25 | 白凯 | 16h |
| 97 | 3.6 | **Oracle服务及服务实例开发** | 0d | 2017-05-31 | 2017-05-31 |  | 2017-05-31 | 2017-06-28 | 20d | start no earlier than 2017-05-31 |  |  |
| 98 | 3.6.1 | Oracle服务功能调研 | 0d | 2017-05-31 | 2017-05-31 |  |  |  |  | start no earlier than 2017-05-25 |  |  |
| 99 | 3.6.2 | Oracle服务实例功能调研 | 0d | 2017-05-31 | 2017-05-31 | 98 |  |  |  | start no earlier than 2017-05-25 |  |  |
| 100 | 3.6.3 | Oracle服务功能开发 | 0d | 2017-05-31 | 2017-05-31 | 99 |  |  |  | start no earlier than 2017-05-25 |  |  |
| 101 | 3.6.4 | Oracle服务实例功能开发 | 0d | 2017-05-31 | 2017-05-31 | 100 |  |  |  | start no earlier than 2017-05-25 |  |  |
| 102 | 3.6.5 | Oracle服务REST API实现 | 0d | 2017-05-31 | 2017-05-31 | 101 |  |  |  | start no earlier than 2017-05-25 |  |  |
| 103 | 3.6.6 | Oracle服务功能集成 | 0d | 2017-05-31 | 2017-05-31 | 102 |  |  |  | start no earlier than 2017-05-25 |  |  |
| 104 | 3.7 | **GreenPlum 服务及服务实例开发** | 20d | 2017-05-31 | 2017-06-28 |  | 2017-05-31 | 2017-06-28 | 20d | start no earlier than 2017-05-31 |  | 160h |
| 105 | 3.7.1 | GreenPlum服务功能调研 | 4d | 2017-05-31 | 2017-06-06 |  |  |  |  | start no earlier than 2017-05-25 | ？？ | 32h |
| 106 | 3.7.2 | GreenPlum 服务实例功能调研 | 4d | 2017-06-06 | 2017-06-12 | 105 |  |  |  | start no earlier than 2017-05-25 | ？？ | 32h |
| 107 | 3.7.3 | GreenPlum服务功能开发 | 4d | 2017-06-12 | 2017-06-16 | 106 |  |  |  | start no earlier than 2017-05-25 | ？？ | 32h |
| 108 | 3.7.4 | GreenPlum 服务实例功能开发 | 4d | 2017-06-18 | 2017-06-22 | 107 |  |  |  | start no earlier than 2017-05-25 | ？？ | 32h |
| 109 | 3.7.5 | GreenPlum 服务REST API实现 | 2d | 2017-06-22 | 2017-06-26 | 108 |  |  |  | start no earlier than 2017-05-25 | ？？ | 16h |
| 110 | 3.7.6 | GreenPlum服务功能集成 | 2d | 2017-06-26 | 2017-06-28 | 109 |  |  |  | start no earlier than 2017-05-25 | ？？ | 16h |

| ID | WBS | Task | Duration | Start | Finish | Predecessors | Baseline start | Baseline finish | Baseline duration | Constraint | Resources | Work |
| --- | --- | --- | --- | --- | --- | --- | --- | --- | --- | --- | --- | --- |
| 111 | 3.8 | **MongoDB服务及服务实例开发** | 20d | 2017-05-31 | 2017-06-28 |  | 2017-05-31 | 2017-06-28 | 20d | start no earlier than 2017-05-31 |  | 160h |
| 112 | 3.8.1 | MongoDB服务功能调研 | 4d | 2017-05-31 | 2017-06-06 |  |  |  |  | start no earlier than 2017-05-25 | 柴宗三 | 32h |
| 113 | 3.8.2 | MongoDB服务实例功能调研 | 4d | 2017-06-06 | 2017-06-12 | 112 |  |  |  | start no earlier than 2017-05-25 | 柴宗三 | 32h |
| 114 | 3.8.3 | MongoDB服务功能开发 | 4d | 2017-06-12 | 2017-06-16 | 113 |  |  |  | start no earlier than 2017-05-25 | 柴宗三 | 32h |
| 115 | 3.8.4 | MongoDB服务实例功能开发 | 4d | 2017-06-18 | 2017-06-22 | 114 |  |  |  | start no earlier than 2017-05-25 | 柴宗三 | 32h |
| 116 | 3.8.5 | MongoDB服务REST API实现 | 2d | 2017-06-22 | 2017-06-26 | 115 |  |  |  | start no earlier than 2017-05-25 | 柴宗三 | 16h |
| 117 | 3.8.6 | MongoDB服务功能集成 | 2d | 2017-06-26 | 2017-06-28 | 116 |  |  |  | start no earlier than 2017-05-25 | 柴宗三 | 16h |
| 118 | 3.9 | **Neo4j服务及服务实例开发** | 20d | 2017-05-31 | 2017-06-28 |  | 2017-05-31 | 2017-06-28 | 20d | start no earlier than 2017-05-31 |  | 160h |
| 119 | 3.9.1 | Neo4j服务功能调研 | 4d | 2017-05-31 | 2017-06-06 |  |  |  |  | start no earlier than 2017-05-25 | 袁伟明 | 32h |
| 120 | 3.9.2 | Neo4j服务实例功能调研 | 4d | 2017-06-06 | 2017-06-12 | 119 |  |  |  | start no earlier than 2017-05-25 | 袁伟明 | 32h |
| 121 | 3.9.3 | Neo4j服务功能开发 | 4d | 2017-06-12 | 2017-06-16 | 120 |  |  |  | start no earlier than 2017-05-25 | 袁伟明 | 32h |
| 122 | 3.9.4 | Neo4j服务实例功能开发 | 4d | 2017-06-18 | 2017-06-22 | 121 |  |  |  | start no earlier than 2017-05-25 | 袁伟明 | 32h |
| 123 | 3.9.5 | Neo4j服务REST API实现 | 2d | 2017-06-22 | 2017-06-26 | 122 |  |  |  | start no earlier than 2017-05-25 | 袁伟明 | 16h |
| 124 | 3.9.6 | Neo4j服务功能集成 | 2d | 2017-06-26 | 2017-06-28 | 123 |  |  |  | start no earlier than 2017-05-25 | 袁伟明 | 16h |
| 125 | 3.10 | **RabbitMQ服务及服务实例开发** | 20d | 2017-05-31 | 2017-06-28 |  | 2017-05-31 | 2017-06-28 | 20d | start no earlier than 2017-05-31 |  | 160h |
| 126 | 3.10.1 | RabbitMQ服务功能调研 | 4d | 2017-05-31 | 2017-06-06 |  |  |  |  | start no earlier than 2017-05-25 | 刘旭 | 32h |
| 127 | 3.10.2 | RabbitMQ服务实例功能调研 | 4d | 2017-06-06 | 2017-06-12 | 126 |  |  |  | start no earlier than 2017-05-25 | 刘旭 | 32h |
| 128 | 3.10.3 | RabbitMQ服务功能开发 | 4d | 2017-06-12 | 2017-06-16 | 127 |  |  |  | start no earlier than 2017-05-25 | 刘旭 | 32h |
| 129 | 3.10.4 | RabbitMQ服务实例功能开发 | 4d | 2017-06-18 | 2017-06-22 | 128 |  |  |  | start no earlier than 2017-05-25 | 刘旭 | 32h |
| 130 | 3.10.5 | RabbitMQ服务RSET API实现 | 2d | 2017-06-22 | 2017-06-26 | 129 |  |  |  | start no earlier than 2017-05-25 | 刘旭 | 16h |
| 131 | 3.10.6 | RabbitMQ服务功能集成 | 2d | 2017-06-26 | 2017-06-28 | 130 |  |  |  | start no earlier than 2017-05-25 | 刘旭 | 16h |
| 132 | 4 | **与DACP调用接口开发** | 5d | 2017-05-31 | 2017-06-07 |  | 2017-05-31 | 2017-06-07 | 5d | start no earlier than 2017-05-31 |  | 40h |
| 133 | 4.1 | 与DACP调用接口沟通 | 1d | 2017-05-31 | 2017-06-01 |  |  |  |  | start no earlier than 2017-05-25 | 于晶 | 8h |
| 134 | 4.2 | DACP接口调用 | 4d | 2017-06-01 | 2017-06-07 | 133 |  |  |  | start no earlier than 2017-05-25 | 于晶 | 32h |

| ID | WBS | Task | Duration | Start | Finish | Predecessors | Baseline start | Baseline finish | Baseline duration | Constraint | Resources | Work |
| --- | --- | --- | --- | --- | --- | --- | --- | --- | --- | --- | --- | --- |
| 135 | 5 | **与信云智交互过程开发** | 20d | 2017-05-31 | 2017-06-28 |  | 2017-05-31 | 2017-06-21 | 15d | start no earlier than 2017-05-31 |  | 160h |
| 136 | 5.1 | **提供REST API供信云智调用来获取服务列表** | 5d | 2017-05-31 | 2017-06-07 |  | 2017-05-31 | 2017-06-07 | 5d | start no earlier than 2017-05-24 |  | 40h |
| 137 | 5.1.1 | REST API接口设计 | 2d | 2017-05-31 | 2017-06-02 |  |  |  |  | start no earlier than 2017-05-25 | 赵一鸣 | 16h |
| 138 | 5.1.2 | REST API实现 | 3d | 2017-06-04 | 2017-06-07 | 137 |  |  |  | start no earlier than 2017-05-25 | 赵一鸣 | 24h |
| 139 | 5.2 | **提供REST API供信云智创建租户** | 5d | 2017-06-07 | 2017-06-14 | 136 | 2017-06-07 | 2017-06-21 | 10d | start no earlier than 2017-05-24 |  | 40h |
| 140 | 5.2.1 | REST API接口设计 | 2d | 2017-06-07 | 2017-06-09 |  |  |  |  | start no earlier than 2017-05-25 | 赵一鸣 | 16h |
| 141 | 5.2.2 | REST API实现 | 3d | 2017-06-11 | 2017-06-14 | 140 |  |  |  | start no earlier than 2017-05-25 | 赵一鸣 | 24h |
| 142 | 5.3 | **提供REST API供信云智查询租户** | 5d | 2017-06-14 | 2017-06-21 | 139 |  |  |  | start no earlier than 2017-05-25 |  | 40h |
| 143 | 5.3.1 | REST API接口设计 | 2d | 2017-06-14 | 2017-06-16 |  |  |  |  | start no earlier than 2017-05-25 | 赵一鸣 | 16h |
| 144 | 5.3.2 | REST API实现 | 3d | 2017-06-18 | 2017-06-21 | 143 |  |  |  | start no earlier than 2017-05-25 | 赵一鸣 | 24h |
| 145 | 5.4 | **提供REST API供信云智修改租户** | 5d | 2017-06-21 | 2017-06-28 | 132, 142 | 2017-06-07 | 2017-06-14 | 5d | start no earlier than 2017-05-24 |  | 40h |
| 146 | 5.4.1 | REST API接口设计 | 2d | 2017-06-21 | 2017-06-23 |  |  |  |  | start no earlier than 2017-05-25 | 赵一鸣 | 16h |
| 147 | 5.4.2 | REST API实现 | 3d | 2017-06-25 | 2017-06-28 | 146 |  |  |  | start no earlier than 2017-05-25 | 赵一鸣 | 24h |
| 148 | 6 | **需求变更任务** | 15d | 2017-06-06 | 2017-06-27 |  |  |  |  | start no earlier than 2017-06-05 |  | 192h |
| 149 | 6.1 | 子公司用户权限控制 | 3d | 2017-06-06 | 2017-06-09 |  |  |  |  | start no earlier than 2017-06-06 |  | 24h |
| 150 | 6.2 | 用户列表页面 | 5d | 2017-06-06 | 2017-06-13 |  |  |  |  | start no earlier than 2017-06-06 |  | 40h |
| 151 | 6.3 | 用户添加 | 4d | 2017-06-13 | 2017-06-19 | 150 |  |  |  | start no earlier than 2017-06-06 |  | 32h |
| 152 | 6.4 | 子公司资源报告 | 3d | 2017-06-19 | 2017-06-22 | 151 |  |  |  | start no earlier than 2017-06-06 |  | 24h |
| 153 | 6.5 | 集团资源报告 | 3d | 2017-06-22 | 2017-06-27 | 152 |  |  |  | start no earlier than 2017-06-06 |  | 24h |
| 154 | 6.6 | **中信云访问资源报告页面** | 0d | 2017-06-06 | 2017-06-06 |  |  |  |  | start no earlier than 2017-06-05 |  |  |
| 155 | 6.6.1 | 资源报告页面可定制化，根据服务实例ID来动态展示 | 0d | 2017-06-06 | 2017-06-06 |  |  |  |  | start no earlier than 2017-06-06 |  |  |
| 156 | 6.6.2 | 中信云中嵌入资源报告页面 | 0d | 2017-06-06 | 2017-06-06 | 155 |  |  |  | start no earlier than 2017-06-06 |  |  |
| 157 | 6.7 | **用户授权完成发邮件** | 6d | 2017-06-06 | 2017-06-14 | 154 |  |  |  | start no earlier than 2017-06-05 |  | 48h |
| 158 | 6.7.1 | 配置邮件服务器信息，后台配置 | 1d | 2017-06-06 | 2017-06-07 |  |  |  |  | start no earlier than 2017-06-06 | 罗丹丹 | 8h |
| 159 | 6.7.2 | 发送邮件功能开发，启动一个线程后台运行 | 3d | 2017-06-07 | 2017-06-12 | 158 |  |  |  | start no earlier than 2017-06-06 | 罗丹丹 | 24h |
| 160 | 6.7.3 | 授权完成触发邮件发送 | 2d | 2017-06-12 | 2017-06-14 | 159 |  |  |  | start no earlier than 2017-06-06 | 罗丹丹 | 16h |

| ID | WBS | Task | Duration | Start | Finish | Predecessors | Constraint | Resources | Work |
| --- | --- | --- | --- | --- | --- | --- | --- | --- | --- |
| 161 | 7 | **其它** | 15d | 2017-06-06 | 2017-06-27 |  | start no earlier than 2017-06-06 |  | 320h |
| 162 | 7.1 | **需求分析** | 4d | 2017-06-06 | 2017-06-12 |  | start no earlier than 2017-06-06 |  | 56h |
| 163 | 7.1.1 | 客户需求理解，前期准备 | 4d | 2017-06-06 | 2017-06-12 |  | start no earlier than 2017-06-06 | 王栋 | 32h |
| 164 | 7.1.2 | 需求讨论，分析 | 3d | 2017-06-06 | 2017-06-09 |  | start no earlier than 2017-06-06 | 王栋 | 24h |
| 165 | 7.2 | **架构设计** | 15d | 2017-06-06 | 2017-06-27 |  | start no earlier than 2017-06-06 |  | 224h |
| 166 | 7.2.1 | 租户模型设计 | 4d | 2017-06-06 | 2017-06-12 |  | start no earlier than 2017-06-06 | 王栋 | 32h |
| 167 | 7.2.2 | 架构设计 | 4d | 2017-06-06 | 2017-06-12 |  | start no earlier than 2017-06-06 | 王栋 | 32h |
| 168 | 7.2.3 | 前端页面原型开发 | 15d | 2017-06-06 | 2017-06-27 |  | start no earlier than 2017-06-06 | 王栋 | 120h |
| 169 | 7.2.4 | 实现方案论证 | 5d | 2017-06-06 | 2017-06-13 |  | start no earlier than 2017-06-06 | 王栋 | 40h |
| 170 | 7.3 | 工作计划编写 | 5d | 2017-06-06 | 2017-06-13 |  | start no earlier than 2017-06-06 | 王栋 | 40h |
| 171 | 7.4 | 项目沟通协调 | 0d | 2017-06-06 | 2017-06-06 |  | start no earlier than 2017-06-06 | 王栋 |  |
| 172 | 8 | Service Broker重构 | 15d | 2017-06-07 | 2017-06-28 |  | start no earlier than 2017-06-07 | 柴宗三 | 120h |
| 173 | 9 | **资源监控数据收集框架开发** | 16d | 2017-06-11 | 2017-07-03 |  | start no earlier than 2017-06-09 |  | 368h |
| 174 | 9.1 | HDFS按实例收集资源使用信息 | 3d | 2017-06-11 | 2017-06-14 |  | start no earlier than 2017-06-09 | 张富强 | 24h |
| 175 | 9.2 | YARN按实例收集资源使用信息 | 3d | 2017-06-14 | 2017-06-19 | 174 | start no earlier than 2017-06-09 | 张富强 | 24h |
| 176 | 9.3 | HBase按实例收集资源使用信息 | 3d | 2017-06-19 | 2017-06-22 | 175 | start no earlier than 2017-06-09 | 张富强 | 24h |
| 177 | 9.4 | HIve按实例收集资源使用信息 | 3d | 2017-06-22 | 2017-06-27 | 176 | start no earlier than 2017-06-09 | 赵星云 | 24h |
| 178 | 9.5 | Kafka按实例收集资源使用信息 | 3d | 2017-06-27 | 2017-06-30 | 177 | start no earlier than 2017-06-09 | 闫林生 | 24h |
| 179 | 9.6 | GreenPlum按实例收集资源使用信息 | 8d | 2017-06-11 | 2017-06-21 |  | start no earlier than 2017-06-09 | 闫林生 | 64h |
| 180 | 9.7 | MongoDB按实例收集资源使用信息 | 8d | 2017-06-21 | 2017-07-03 | 179 | start no earlier than 2017-06-09 | 闫林生 | 64h |
| 181 | 9.8 | Neo4j按实例收集资源使用信息 | 5d | 2017-06-11 | 2017-06-16 |  | start no earlier than 2017-06-09 | 赵星云 | 40h |
| 182 | 9.9 | RabbitMQ按实例收集资源使用信息 | 5d | 2017-06-18 | 2017-06-23 | 181 | start no earlier than 2017-06-09 | 赵星云 | 40h |
| 183 | 9.10 | 按实例获取资源使用信息REST API | 5d | 2017-06-25 | 2017-06-30 | 182 | start no earlier than 2017-06-09 | 赵星云 | 40h |
